# ProjectPlan_1

Schedule from MS Project, 2013-08-28 to 2013-11-26, A marks actual dates.
Central TAFE

## Calendars

- Standard: Mon-Fri 08:00-12:00, 13:00-17:00; Sat-Sun off.

## Resources

| Resource | Group |
| --- | --- |
| Project Manager |  |
| TL Requirements | Req |
| TL Modelling | Mod |
| TL Development | Dev |
| MD Consultant | Mod / Dev |
| S Requirements | Req |
| S Modelling (M) | Mod |
| S Modelling (K) | Mod |
| S Development (O) | Dev |
| S Development (S) | Dev |

## Schedule

| ID | WBS | Task | Type | Duration | Start | Finish | Predecessors | Complete | Remaining | Baseline start | Baseline finish | Baseline duration | Baseline 1 start | Baseline 1 finish | Total slack | Resources | Work | Actual work |
| --- | --- | --- | --- | --- | --- | --- | --- | --- | --- | --- | --- | --- | --- | --- | --- | --- | --- | --- |
| 1 | 1 | **Modelling** |  | 40d | 2013-08-28 A | 2013-10-23 A |  | 100% |  | 2013-08-26 | 2013-09-24 | 22d | 2013-08-28 | 2013-10-23 |  |  | 361.5h | 361.5h |
| 2 | 1.1 | **Analysis** |  | 8.38d | 2013-08-28 A | 2013-09-10 A |  | 100% |  | 2013-08-26 | 2013-08-30 | 4.31d | 2013-08-28 | 2013-09-10 |  |  | 74.5h | 74.5h |
| 3 | 1.1.1 | Requirements Documentation | milestone | 0d | 2013-08-28 A | 2013-08-28 A |  | 100% |  | 2013-08-26 | 2013-08-26 | 0d | 2013-08-28 | 2013-08-28 |  | TL Requirements |  |  |
| 4 | 1.1.2 | Determine Use Cases |  | 17.5h | 2013-09-03 A | 2013-09-10 A | 3 | 100% |  | 2013-08-26 | 2013-08-28 | 13h | 2013-09-03 | 2013-09-10 |  | MD Consultant; S Modelling (K); S Modelling (M); TL Modelling | 52h | 52h |
| 5 | 1.1.3 | Draft : Database and ERD | milestone | 0h | 2013-09-04 A | 2013-09-04 A | 3 | 100% |  | 2013-08-26 | 2013-08-27 | 6h | 2013-09-04 | 2013-09-04 |  | TL Modelling |  |  |
| 6 | 1.1.4 | Draft : Prototype |  | 8.5h | 2013-09-04 A | 2013-09-09 A | 3FS+2d | 100% |  | 2013-08-28 | 2013-08-30 | 6h | 2013-09-04 | 2013-09-09 |  | MD Consultant; S Modelling (K); S Modelling (M) | 22.5h | 22.5h |
| 7 | 1.2 | **Design** |  | 20.62d | 2013-09-10 A | 2013-10-08 A |  | 100% |  | 2013-08-27 | 2013-09-17 | 15d | 2013-09-10 | 2013-10-08 |  |  | 134h | 134h |
| 8 | 1.2.1 | Design Interface |  | 15h | 2013-09-10 A | 2013-09-16 A | 2 | 100% |  | 2013-08-30 | 2013-09-04 | 14h | 2013-09-10 | 2013-09-16 |  | MD Consultant; S Modelling (K); S Modelling (M) | 31h | 31h |
| 9 | 1.2.2 | Design Database to Specification |  | 15h | 2013-09-10 A | 2013-09-16 A | 5 | 100% |  | 2013-08-27 | 2013-08-27 | 3h | 2013-09-10 | 2013-09-16 |  | TL Modelling | 15h | 15h |
| 10 | 1.2.3 | Design Modules and Architecture |  | 15h | 2013-09-10 A | 2013-09-16 A | 2 | 100% |  | 2013-08-30 | 2013-09-04 | 14h | 2013-09-10 | 2013-09-16 |  | S Modelling (M); TL Modelling | 27h | 27h |
| 11 | 1.2.4 | Create Prototype : Limited Functionality |  | 17h | 2013-09-23 A | 2013-09-27 A | 6, 8 | 100% |  | 2013-09-06 | 2013-09-11 | 17h | 2013-09-23 | 2013-09-27 |  | S Modelling (K); S Modelling (M) | 34h | 34h |
| 12 | 1.2.5 | Prototype Signoff | milestone | 0d | 2013-09-27 A | 2013-09-27 A | 11 | 100% |  | 2013-09-11 | 2013-09-11 | 0d | 2013-09-27 | 2013-09-27 |  |  |  |  |
| 13 | 1.2.6 | Documentation : Software Requirements |  | 27h | 2013-09-30 A | 2013-10-08 A | 9FS+1d, 10FS+1d, 12FS+1d | 100% |  | 2013-09-13 | 2013-09-17 | 10h | 2013-09-30 | 2013-10-08 |  | TL Modelling | 27h | 27h |
| 14 | 1.3 | **Development** |  | 26d | 2013-09-17 A | 2013-10-23 A |  | 100% |  | 2013-09-17 | 2013-09-24 | 5.62d | 2013-09-17 | 2013-10-23 |  |  | 153h | 153h |
| 15 | 1.3.1 | Finalise Use Cases | milestone | 0h | 2013-09-17 A | 2013-09-17 A | 7 | 100% |  | 2013-09-17 | 2013-09-18 | 7h | 2013-09-17 | 2013-09-17 |  | TL Modelling |  |  |
| 16 | 1.3.2 | Finalise Flow Charts | milestone | 0h | 2013-09-17 A | 2013-09-17 A | 7 | 100% |  | 2013-09-17 | 2013-09-18 | 7h | 2013-09-17 | 2013-09-17 |  | TL Modelling |  |  |
| 17 | 1.3.3 | Finalise Database | milestone | 0h | 2013-09-17 A | 2013-09-17 A | 7 | 100% |  | 2013-09-17 | 2013-09-17 | 3h | 2013-09-17 | 2013-09-17 |  | TL Modelling |  |  |
| 18 | 1.3.4 | Application Template |  | 51h | 2013-10-04 A | 2013-10-23 A | 7FS+2d | 100% |  | 2013-09-20 | 2013-09-24 | 14h | 2013-10-04 | 2013-10-23 |  | MD Consultant; S Modelling (K); S Modelling (M) | 153h | 153h |
| 19 | 2 | **Development** |  | 16.7d | 2013-11-04 A | 2013-11-26 |  | 63% | 6.16d | 2013-09-25 | 2013-10-11 | 11.81d | 2013-11-04 | 2013-11-26 | 0d |  | 295h | 150.2h |
| 20 | 2.1 | Build Application |  | 41h | 2013-11-04 A | 2013-11-19 | 14 | 80% | 8.2h | 2013-09-25 | 2013-10-11 | 41h | 2013-11-04 | 2013-11-19 | 0d | MD Consultant; S Development (O); S Development (S); TL Development | 164h | 131.2h |
| 21 | 2.2 | Test Application |  | 10h | 2013-11-18 A | 2013-11-22 | 20 | 10% | 9h |  |  |  | 2013-11-18 | 2013-11-22 | 0d | MD Consultant; Project Manager; S Development (O); S Development (S); S Modelling (K); S Modelling (M); S Requirements; TL Development; TL Modelling; TL Requirements | 100h | 10h |
| 22 | 2.3 | Documentation : Testing |  | 3h | 2013-11-18 A | 2013-11-25 | 21 | 30% | 2.1h |  |  |  | 2013-11-18 | 2013-11-25 | 0d | MD Consultant; Project Manager; S Development (O); S Development (S); S Modelling (K); S Modelling (M); S Requirements; TL Development; TL Modelling; TL Requirements | 30h | 9h |
| 23 | 2.4 | Application Signoff |  | 1h | 2013-11-26 | 2013-11-26 | 22FS+1d |  |  | 2013-10-11 | 2013-10-11 | 0d | 2013-11-26 | 2013-11-26 | 0d | Project Manager | 1h |  |
